# OpenVehiculeLocator

How a schedule from Planner changed from version to version. A marks actual dates.

## Version 1 (saved 2023-03-11)

Note of the change: Edit and reorganize the repository

| ID | WBS | Task | Duration | Start | Finish | Predecessors | Complete | Constraint |
| --- | --- | --- | --- | --- | --- | --- | --- | --- |
| 1 | 1 | **Etudes Préalables** |  | 2023-01-16 | 2023-01-31 |  |  |  |
| 2 |  | Réunion de début de projet |  | 2023-01-16 | 2023-01-16 |  | 65% |  |
| 3 |  | Formalisation des échanges |  | 2023-01-17 | 2023-01-24 | 2 | 100% |  |
| 4 |  | Définition des protocoles utilisés |  | 2023-01-17 | 2023-01-24 | 2 | 100% |  |
| 5 |  | Définition de l'électronique utilisés |  | 2023-01-17 | 2023-01-24 | 2 | 100% |  |
| 6 |  | Définition du design des IHM |  | 2023-01-17 | 2023-01-24 | 2 | 100% |  |
| 7 |  | Réalisation des diagrammes UML |  | 2023-01-24 | 2023-01-30 | 5, 4, 3 | 100% |  |
| 8 |  | Revue de Projet 1 | 0d | 2023-01-26 | 2023-01-26 |  |  | must start on 2023-01-26 |
| 9 |  | Réalisation de la documentation interne |  | 2023-01-30 | 2023-01-31 | 7 | 100% |  |
| 10 | 2 | **Réalisation de Proofs of Concepts** |  | 2023-01-31 | 2023-03-13 | 9 |  |  |
| 11 |  | Développement du traqueur (hors GPRS) |  | 2023-01-31 | 2023-02-07 |  | 100% |  |
| 12 |  | Développement du traqueur, biliothèque GPRS |  | 2023-02-07 | 2023-02-27 | 11 | 100% |  |
| 13 |  | Fusion du développement traqueur | 0d | 2023-02-27 | 2023-02-27 |  |  | must start on 2023-02-27 |
| 14 |  | Assemblage de la bibliothèque GPRS avec le reste du programme |  | 2023-02-27 | 2023-02-28 | 11FS+1h, 12FS+1h | 100% |  |
| 15 |  | Configuration de la BDD |  | 2023-01-31 | 2023-02-01 |  | 100% |  |
| 16 |  | Développement de l'API |  | 2023-01-31 | 2023-02-28 |  | 100% |  |
| 17 |  | Développement de l'application mobile |  | 2023-01-31 | 2023-02-28 |  | 100% |  |
| 18 |  | Développement de l'application web |  | 2023-01-31 | 2023-02-28 |  | 100% |  |
| 19 |  | Revue de Projet 2 | 0d | 2023-03-13 | 2023-03-13 |  |  | must start on 2023-03-13 |
| 20 |  | Tests de l'API et des IHM |  | 2023-02-28 | 2023-03-13 | 18, 17, 16 | 100% |  |
| 21 |  | Tests du serveur de gestion et du traqueur |  | 2023-02-28 | 2023-03-13 | 14 | 100% |  |
| 22 | 3 | **Prototypage** |  | 2023-03-14 | 2023-04-06 | 21FS+24h, 20FS+24h |  |  |
| 23 |  | Amélioration du traqueur, correction des bugs majeurs, gestion des erreurs tierces |  | 2023-03-14 | 2023-03-23 |  |  |  |
| 24 |  | Amélioration du serveur de gestion, correction des bugs majeurs, gestion des erreurs tierces |  | 2023-03-14 | 2023-03-23 |  |  |  |
| 25 |  | Amérlioration de l'API, correction des bugs majeurs, gestion des erreurs utilisateur |  | 2023-03-14 | 2023-03-23 |  |  |  |
| 26 |  | Amérlioration de l'App Web, correction des bugs majeurs, gestion des erreurs utilisateur et/ou tierces |  | 2023-03-14 | 2023-03-23 |  |  |  |
| 27 |  | Amérlioration de l'App mobile, correction des bugs majeurs, gestion des erreurs utilisateur et/ou tierces |  | 2023-03-14 | 2023-03-23 |  |  |  |
| 28 |  | Réalisation de la documentation utilisateur |  | 2023-03-14 | 2023-03-23 |  |  |  |
| 29 |  | Tests d'intégration complets |  | 2023-03-27 | 2023-03-28 | 27, 26, 25, 24, 23FS+5h |  |  |
| 30 |  | Production d'une version alpha |  | 2023-04-03 | 2023-04-06 | 29FS+48h |  |  |
| 31 | 4 | **Fiabilisation (Facultatif en fonction de l'avancement)** |  | 2023-04-10 | 2023-05-04 | 30FS+9h |  |  |
| 32 |  | Tests du système complet en conditions réelles et dégradées |  | 2023-04-10 | 2023-04-12 |  |  |  |
| 33 |  | Débuggage des bugs notables |  | 2023-04-10 | 2023-04-12 |  |  |  |
| 34 |  | Amélioration et correction de la documentation utilisateur |  | 2023-04-13 | 2023-05-02 | 33FS+8h, 32FS+8h |  |  |
| 35 |  | Revue de Projet 3 | 0d | 2023-05-02 | 2023-05-02 |  |  | must start on 2023-05-02 |
| 36 |  | Production d'une version beta |  | 2023-05-03 | 2023-05-04 | 34FS+4h |  |  |
| 37 |  | Fin de projet | 0d | 2023-05-22 | 2023-05-19 |  |  | must start on 2023-05-19 |

## Version 2 (saved 2023-05-09)

Note of the change: Add a bug into tracker doc and update link for webinterface

Last finish 2023-05-19 → 2023-05-25 (+6d). Complete tasks 15 → 22.

Changed:

| ID | Task | Start | Finish | Complete | Predecessors | Other |
| --- | --- | --- | --- | --- | --- | --- |
| 22 | **Prototypage** |  | 2023-04-06 → 2023-05-11 (+35d) |  |  |  |
| 23 | Amélioration du traqueur, correction des bugs majeurs, gestion des erreurs tierces |  | 2023-03-23 → 2023-05-02 (+40d) | 0% → 100% |  |  |
| 24 | Amélioration du serveur de gestion, correction des bugs majeurs, gestion des erreurs tierces |  | 2023-03-23 → 2023-05-02 (+40d) | 0% → 100% |  |  |
| 25 | Amérlioration de l'API, correction des bugs majeurs, gestion des erreurs utilisateur |  | 2023-03-23 → 2023-05-02 (+40d) | 0% → 100% |  |  |
| 26 | Amérlioration de l'App Web, correction des bugs majeurs, gestion des erreurs utilisateur et/ou tierces |  | 2023-03-23 → 2023-05-02 (+40d) | 0% → 100% |  |  |
| 27 | Amérlioration de l'App mobile, correction des bugs majeurs, gestion des erreurs utilisateur et/ou tierces |  | 2023-03-23 → 2023-05-02 (+40d) | 0% → 100% |  |  |
| 28 | Réalisation de la documentation utilisateur | 2023-03-14 → 2023-04-10 (+27d) | 2023-03-23 → 2023-05-02 (+40d) | 0% → 100% |  | constraint none → must start on 2023-04-10 |
| 29 | Tests d'intégration complets | 2023-03-27 → 2023-05-02 (+36d) | 2023-03-28 → 2023-05-04 (+37d) | 0% → 100% | 27, 26, 25, 24, 23FS+5h → 27, 26, 25, 24, 23 |  |
| 30 | Revue de Projet 3 | 2023-05-02 → 2023-05-09 (+7d) | 2023-05-02 → 2023-05-09 (+7d) |  |  | constraint must start on 2023-05-02 → must start on 2023-05-09 |
| 31 | Production d'une version alpha | 2023-04-03 → 2023-05-08 (+35d) | 2023-04-06 → 2023-05-11 (+35d) |  | 29FS+48h → 29 |  |
| 32 | **Fiabilisation (Facultatif en fonction de l'avancement)** | 2023-04-10 → 2023-05-15 (+35d) | 2023-05-04 → 2023-05-25 (+21d) |  |  |  |
| 33 | Tests du système complet en conditions réelles et dégradées | 2023-04-10 → 2023-05-15 (+35d) | 2023-04-12 → 2023-05-17 (+35d) |  |  |  |
| 34 | Débuggage des bugs notables | 2023-04-10 → 2023-05-15 (+35d) | 2023-04-12 → 2023-05-17 (+35d) |  |  |  |
| 35 | Amélioration et correction de la documentation utilisateur | 2023-04-13 → 2023-05-22 (+39d) | 2023-05-02 → 2023-05-23 (+21d) |  |  |  |
| 36 | Production d'une version beta | 2023-05-03 → 2023-05-24 (+21d) | 2023-05-04 → 2023-05-25 (+21d) |  |  |  |

## Version 3 (saved 2023-06-06)

Note of the change: update diagrams

Last finish stays 2023-05-25. Complete tasks 22 → 23.

Changed:

| ID | Task | Complete |
| --- | --- | --- |
| 31 | Production d'une version alpha | 0% → 100% |
